# Projeto Vídeo Institucional Ágil v4.0

How a schedule from MS Project changed from version to version. A marks actual dates.

## Version 1 (saved 2019-04-28, file Projeto+Vídeo+Institucional+Ágil+v4.0.mpp)

Note of the change: features

| ID | WBS | Task | Duration | Start | Finish | Total float |
| --- | --- | --- | --- | --- | --- | --- |
| 1 | 1 | **Tema 1 - Criação** | 1d? | 2019-05-06 | 2019-05-06 | 0d |
| 2 |  | Brainstorm de criação | 1d? | 2019-05-06 | 2019-05-06 | 0d |
| 3 |  | Criar Roteiro | 1d? | 2019-05-06 | 2019-05-06 | 0d |
| 4 |  | Criar Storyboard | 1d? | 2019-05-06 | 2019-05-06 | 0d |
| 5 |  | Entrega do 1º Release - Script | 0d | 2019-05-06 | 2019-05-06 | 1d |
| 6 | 2 | **Tema 2 - Planejamento** | 1d? | 2019-05-06 | 2019-05-06 | 0d |
| 7 |  | Selecionar Casting | 1d? | 2019-05-06 | 2019-05-06 | 0d |
| 8 |  | Selecionar Garoto Propaganda | 1d? | 2019-05-06 | 2019-05-06 | 0d |
| 9 |  | Selecionar Locações de Filmagem | 1d? | 2019-05-06 | 2019-05-06 | 0d |
| 10 |  | Entrega do 2º Release - Locações e castings | 0d | 2019-05-06 | 2019-05-06 | 1d |
| 11 |  | Planejar Estrutura de Produção | 1d? | 2019-05-06 | 2019-05-06 | 0d |
| 12 |  | Planejar Cenários | 1d? | 2019-05-06 | 2019-05-06 | 0d |
| 13 |  | Planejar Figurino | 1d? | 2019-05-06 | 2019-05-06 | 0d |
| 14 |  | Planejar Deslocamento das Equipes | 1d? | 2019-05-06 | 2019-05-06 | 0d |
| 15 |  | Definir Cronograma de Filmagens | 1d? | 2019-05-06 | 2019-05-06 | 0d |
| 16 |  | Definir Cronograma de Edição | 1d? | 2019-05-06 | 2019-05-06 | 0d |
| 17 |  | Entrega do 3º Release - Cronograma da produção | 0d | 2019-05-06 | 2019-05-06 | 1d |
| 18 |  | Definir Equipamentos de Filmagem | 1d? | 2019-05-06 | 2019-05-06 | 0d |
| 19 |  | Definir Equipe de Filmagem | 1d? | 2019-05-06 | 2019-05-06 | 0d |
| 20 |  | Definir Equipamentos de Audio | 1d? | 2019-05-06 | 2019-05-06 | 0d |
| 21 |  | Definir Equipe de Audio | 1d? | 2019-05-06 | 2019-05-06 | 0d |
| 22 |  | Definir Equipamentos de Iluminação | 1d? | 2019-05-06 | 2019-05-06 | 0d |
| 23 |  | Definir Equipe de Iluminação | 1d? | 2019-05-06 | 2019-05-06 | 0d |
| 24 |  | Criar Orçamento e Planejamento Financeiro | 1d? | 2019-05-06 | 2019-05-06 | 0d |
| 25 |  | Entrega do 4º Release - Orçamento final | 0d | 2019-05-06 | 2019-05-06 | 1d |
| 26 | 3 | **Tema 3 - Execução** | 1d? | 2019-05-06 | 2019-05-06 | 0d |
| 27 |  | Contratações dos Serviços e Equipes | 1d? | 2019-05-06 | 2019-05-06 | 0d |
| 28 |  | Montagem do Local | 1d? | 2019-05-06 | 2019-05-06 | 0d |
| 29 |  | Montagem do Cenário | 1d? | 2019-05-06 | 2019-05-06 | 0d |
| 30 |  | Montagem dos Equipamentos de Filmagem | 1d? | 2019-05-06 | 2019-05-06 | 0d |
| 31 |  | Montagem dos Equipamentos de Audio | 1d? | 2019-05-06 | 2019-05-06 | 0d |
| 32 |  | Montagem dos Equipamentos de Iluminação | 1d? | 2019-05-06 | 2019-05-06 | 0d |
| 33 |  | Entrega do 5º Release - Montagem concluída | 0d | 2019-05-06 | 2019-05-06 | 1d |
| 34 |  | Ensaios | 1d? | 2019-05-06 | 2019-05-06 | 0d |
| 35 |  | Filmagens | 1d? | 2019-05-06 | 2019-05-06 | 0d |
| 36 |  | Desmontagem | 1d? | 2019-05-06 | 2019-05-06 | 0d |
| 37 |  | Limpeza | 1d? | 2019-05-06 | 2019-05-06 | 0d |
| 38 |  | Entrega do 6º Release - Filmagens bruta | 0d | 2019-05-06 | 2019-05-06 | 1d |
| 39 | 4 | **Tema 4 - Pós Produção** | 1d? | 2019-05-06 | 2019-05-06 | 0d |
| 40 |  | Decupagem de Material | 1d? | 2019-05-06 | 2019-05-06 | 0d |
| 41 |  | Edição | 1d? | 2019-05-06 | 2019-05-06 | 0d |
| 42 |  | Efeitos Especiais | 1d? | 2019-05-06 | 2019-05-06 | 0d |
| 43 |  | Tratamento e Correções | 1d? | 2019-05-06 | 2019-05-06 | 0d |
| 44 |  | Renderização | 1d? | 2019-05-06 | 2019-05-06 | 0d |
| 45 |  | Entrega do 7º Release (Fim) - Vídeo Final | 0d | 2019-05-06 | 2019-05-06 | 1d |

## Version 2 (saved 2023-02-04, file Projeto V¡deo Institucional V2.0 (Tarefas Relacionadas).mpp)

Note of the change: feautes

Last finish 2019-05-06 → 2016-04-04 (-1127d).

Added:

| ID | Task | Duration | Start | Finish | Predecessors |
| --- | --- | --- | --- | --- | --- |
| 1 | Início do Projeto | 0d | 2016-01-04 | 2016-01-04 |  |
| 24 | Término Etapa 2 | 0d | 2016-03-01 | 2016-03-01 | 7 |
| 25 | **Etapa 3 - Execução** | 8.5d | 2016-03-02 | 2016-03-14 | 24 |
| 36 | Término Etapa 3 | 0d | 2016-03-14 | 2016-03-14 | 25FS+4h |
| 37 | **Etapa 4 - Pós Produção** | 13.5d | 2016-03-15 | 2016-04-04 | 36 |
| 43 | Entrega | 0d | 2016-04-04 | 2016-04-04 | 42 |
| 44 | Término do Projeto | 0d | 2016-04-04 | 2016-04-04 | 37 |

Removed: 10 Entrega do 2º Release - Locações e castings; 17 Entrega do 3º Release - Cronograma da produção; 25 Entrega do 4º Release - Orçamento final; 26 Tema 3 - Execução; 33 Entrega do 5º Release - Montagem concluída; 38 Entrega do 6º Release - Filmagens bruta; 39 Tema 4 - Pós Produção; 45 Entrega do 7º Release (Fim) - Vídeo Final

Changed:

| ID | Task | Start | Finish | Duration | Total float | Predecessors | Other |
| --- | --- | --- | --- | --- | --- | --- | --- |
| 2 | **Etapa 1 - Criação** | 2019-05-06 → 2016-01-04 (-1218d) | 2019-05-06 → 2016-01-22 (-1200d) | 1d? → 13d |  | none → 1 | was named Tema 1 - Criação |
| 3 | Brainstorm de criação | 2019-05-06 → 2016-01-04 (-1218d) | 2019-05-06 → 2016-01-04 (-1218d) | 1d? → 4h |  |  | resources none → Animador (Efeitos Especiais); Diretor; Cenografista; Diretor de Fotografia; Editor |
| 4 | Criar Roteiro | 2019-05-06 → 2016-01-05 (-1217d) | 2019-05-06 → 2016-01-20 (-1202d) | 1d? → 10d |  | none → 3FS+4h | resources none → Diretor [50%] |
| 5 | Criar Storyboard | 2019-05-06 → 2016-01-21 (-1201d) | 2019-05-06 → 2016-01-22 (-1200d) | 1d? → 2d |  | none → 4 | resources none → Desenhista; Designer |
| 6 | Término Etapa 1 | 2019-05-06 → 2016-01-22 (-1200d) | 2019-05-06 → 2016-01-22 (-1200d) |  | 1d → 0d | none → 2 | was named Entrega do 1º Release - Script |
| 7 | **Etapa 2 - Planejamento** | 2019-05-06 → 2016-01-25 (-1197d) | 2019-05-06 → 2016-03-01 (-1161d) | 1d? → 22d |  | none → 6 | was named Tema 2 - Planejamento |
| 8 | Selecionar Casting | 2019-05-06 → 2016-01-25 (-1197d) | 2019-05-06 → 2016-02-03 (-1188d) | 1d? → 5d |  |  | resources none → Diretor [25%] |
| 9 | Selecionar Garoto Propaganda | 2019-05-06 → 2016-02-02 (-1189d) | 2019-05-06 → 2016-02-03 (-1188d) | 1d? → 1d | 0d → 17d | none → 8FF |  |
| 10 | Selecionar Locações de Filmagem | 2019-05-06 → 2016-01-25 (-1197d) | 2019-05-06 → 2016-02-19 (-1172d) | 1d? → 15d |  | none → 8SS |  |
| 11 | Definir Equipamentos de Filmagem | 2019-05-06 → 2016-02-22 (-1169d) | 2019-05-06 → 2016-02-22 (-1169d) | 1d? → 1d |  | none → 10 |  |
| 12 | Definir Equipe de Filmagem | 2019-05-06 → 2016-02-22 (-1169d) | 2019-05-06 → 2016-02-22 (-1169d) | 1d? → 1d |  | none → 11SS |  |
| 13 | Definir Equipamentos de Audio | 2019-05-06 → 2016-02-22 (-1169d) | 2019-05-06 → 2016-02-22 (-1169d) | 1d? → 1d |  | none → 10 |  |
| 14 | Definir Equipe de Audio | 2019-05-06 → 2016-02-22 (-1169d) | 2019-05-06 → 2016-02-22 (-1169d) | 1d? → 1d |  | none → 13SS |  |
| 15 | Definir Equipamentos de Iluminação | 2019-05-06 → 2016-02-22 (-1169d) | 2019-05-06 → 2016-02-22 (-1169d) | 1d? → 1d |  | none → 10 |  |
| 16 | Definir Equipe de Iluminação | 2019-05-06 → 2016-02-22 (-1169d) | 2019-05-06 → 2016-02-22 (-1169d) | 1d? → 1d |  | none → 15SS |  |
| 17 | Planejar Estrutura de Produção | 2019-05-06 → 2016-02-23 (-1168d) | 2019-05-06 → 2016-02-26 (-1165d) | 1d? → 4d |  | none → 11, 12, 13, 14, 15, 16 | resources none → Câmeras [1.25 Diária] |
| 18 | Planejar Cenários | 2019-05-06 → 2016-02-29 (-1162d) | 2019-05-06 → 2016-03-01 (-1161d) | 1d? → 2d |  | none → 17 |  |
| 19 | Planejar Figurino | 2019-05-06 → 2016-02-29 (-1162d) | 2019-05-06 → 2016-02-29 (-1162d) | 1d? → 1d | 0d → 1d | none → 17 |  |
| 20 | Planejar Deslocamento das Equipes | 2019-05-06 → 2016-02-22 (-1169d) | 2019-05-06 → 2016-02-22 (-1169d) | 1d? → 1d | 0d → 6d | none → 10 |  |
| 21 | Definir Cronograma de Filmagens | 2019-05-06 → 2016-02-29 (-1162d) | 2019-05-06 → 2016-03-01 (-1161d) | 1d? → 2d |  | none → 17 |  |
| 22 | Definir Cronograma de Edição | 2019-05-06 → 2016-02-29 (-1162d) | 2019-05-06 → 2016-03-01 (-1161d) | 1d? → 2d |  | none → 21SS |  |
| 23 | Criar Orçamento e Planejamento Financeiro | 2019-05-06 → 2016-02-29 (-1162d) | 2019-05-06 → 2016-02-29 (-1162d) | 1d? → 1d | 0d → 1d | none → 17 |  |
| 26 | Contratações dos Serviços e Equipes | 2019-05-06 → 2016-03-02 (-1160d) | 2019-05-06 → 2016-03-03 (-1159d) | 1d? → 2d |  |  |  |
| 27 | Montagem do Local | 2019-05-06 → 2016-03-04 (-1158d) | 2019-05-06 → 2016-03-04 (-1158d) | 1d? → 1d |  | none → 26 |  |
| 28 | Montagem do Cenário | 2019-05-06 → 2016-03-07 (-1155d) | 2019-05-06 → 2016-03-07 (-1155d) | 1d? → 1d |  | none → 27 | resources none → Projeto Cenário [0.1%] |
| 29 | Montagem dos Equipamentos de Filmagem | 2019-05-06 → 2016-03-08 (-1154d) | 2019-05-06 → 2016-03-08 (-1154d) | 1d? → 4h |  | none → 28FS+4h | resources none → Câmeras [10 Diária]; Cabos [100 Metros] |
| 30 | Montagem dos Equipamentos de Audio | 2019-05-06 → 2016-03-08 (-1154d) | 2019-05-06 → 2016-03-08 (-1154d) | 1d? → 4h |  | none → 28FS+4h |  |
| 31 | Montagem dos Equipamentos de Iluminação | 2019-05-06 → 2016-03-08 (-1154d) | 2019-05-06 → 2016-03-08 (-1154d) | 1d? → 4h |  | none → 28FS+4h |  |
| 32 | Ensaios | 2019-05-06 → 2016-03-09 (-1153d) | 2019-05-06 → 2016-03-09 (-1153d) | 1d? → 1d |  | none → 29, 30, 31 | constraint none → must start on 2016-03-09 |
| 33 | Filmagens | 2019-05-06 → 2016-03-10 (-1152d) | 2019-05-06 → 2016-03-10 (-1152d) | 1d? → 1d |  | none → 32 | constraint none → must start on 2016-03-10; resources none → Câmeras [1.25 Diária]; Cabos [100 Metros] |
| 34 | Desmontagem | 2019-05-06 → 2016-03-11 (-1151d) | 2019-05-06 → 2016-03-11 (-1151d) | 1d? → 1d |  | none → 33 |  |
| 35 | Limpeza | 2019-05-06 → 2016-03-14 (-1148d) | 2019-05-06 → 2016-03-14 (-1148d) | 1d? → 4h |  | none → 34 |  |
| 38 | Decupagem de Material | 2019-05-06 → 2016-03-15 (-1147d) | 2019-05-06 → 2016-03-15 (-1147d) | 1d? → 1d |  |  |  |
| 39 | Edição | 2019-05-06 → 2016-03-16 (-1146d) | 2019-05-06 → 2016-03-22 (-1140d) | 1d? → 5d |  | none → 38 |  |
| 40 | Efeitos Especiais | 2019-05-06 → 2016-03-23 (-1139d) | 2019-05-06 → 2016-03-30 (-1132d) | 1d? → 5d |  | none → 39 |  |
| 41 | Tratamento e Correções | 2019-05-06 → 2016-03-31 (-1131d) | 2019-05-06 → 2016-04-01 (-1130d) | 1d? → 2d |  | none → 40 |  |
| 42 | Renderização | 2019-05-06 → 2016-04-04 (-1127d) | 2019-05-06 → 2016-04-04 (-1127d) | 1d? → 4h |  | none → 41 |  |

## Version 3 (saved 2023-02-05, file Projeto V¡deo Institucional V3.0 (Recursos Superalocados - Parte 1).mpp)

Note of the change: features

Last finish stays 2016-04-04.

Changed:

| ID | Task | Other |
| --- | --- | --- |
| 3 | Brainstorm de criação | resources Animador (Efeitos Especiais); Diretor; Cenografista; Diretor de Fotografia; Editor → Diretor; Diretor de Fotografia; Editor; Animador (Efeitos Especiais); Cenografista |
| 8 | Selecionar Casting | resources Diretor [25%] → Diretor [50%] |
| 9 | Selecionar Garoto Propaganda | resources none → Diretor [50%] |
| 10 | Selecionar Locações de Filmagem | resources none → Diretor [50%] |
| 11 | Definir Equipamentos de Filmagem | resources none → Diretor de Fotografia [50%] |
| 12 | Definir Equipe de Filmagem | resources none → Diretor de Fotografia |
| 13 | Definir Equipamentos de Audio | resources none → Técnico de Áudio [25%] |
| 14 | Definir Equipe de Audio | resources none → Técnico de Áudio [50%] |
| 15 | Definir Equipamentos de Iluminação | resources none → Técnico de Iluminação [50%] |
| 16 | Definir Equipe de Iluminação | resources none → Técnico de Iluminação |
| 17 | Planejar Estrutura de Produção | resources Câmeras [1.25 Diária] → Produtor |
| 18 | Planejar Cenários | resources none → Cenografista |
| 19 | Planejar Figurino | resources none → Figurinista |
| 20 | Planejar Deslocamento das Equipes | resources none → Produtor [50%] |
| 21 | Definir Cronograma de Filmagens | resources none → Diretor [50%]; Produtor [50%] |
| 22 | Definir Cronograma de Edição | resources none → Editor [25%] |
| 23 | Criar Orçamento e Planejamento Financeiro | resources none → Produtor |
| 26 | Contratações dos Serviços e Equipes | resources none → Produtor [50%] |
| 27 | Montagem do Local | resources none → Produtor [1000%] |
| 29 | Montagem dos Equipamentos de Filmagem | resources Câmeras [10 Diária]; Cabos [100 Metros] → Câmeras [1.25 Diária]; Cabos [12.5 Metros]; Técnico de Filmagem [500%] |
| 30 | Montagem dos Equipamentos de Audio | resources none → Mesa de Som [0.25 Diária]; Microfones [0.5 Diária]; Cabos [3.75 Metros]; Técnico de Áudio [300%] |
| 31 | Montagem dos Equipamentos de Iluminação | resources none → Mesa de Luz [0.12 Diária]; Spots de Luz [1.5 Diária]; Técnico de Iluminação [500%] |
| 32 | Ensaios | resources none → Diretor; Diretor de Fotografia; Figurinista; Técnico de Áudio; Técnico de Filmagem; Técnico de Iluminação; Mesa de Luz [0.12 Diária]; Mesa de Som [0.25 Diária]; Spots de Luz [1.5 Diária]; Cabos [16.25 Metros]; Microfones [0.5 Diária]; Câmeras [1.25 Diária]; Cameraman [1000%]; Produtor [500%]; Operador de Som [300%] |
| 33 | Filmagens | resources Câmeras [1.25 Diária]; Cabos [100 Metros] → Câmeras [1.25 Diária]; Cabos [16.25 Metros]; Operador de Som [300%]; Diretor; Diretor de Fotografia; Figurinista; Técnico de Áudio; Técnico de Filmagem; Técnico de Iluminação; Mesa de Luz [0.12 Diária]; Mesa de Som [0.25 Diária]; Spots de Luz [1.5 Diária]; Microfones [0.5 Diária]; Produtor [500%] |
| 34 | Desmontagem | resources none → Produtor [1000%]; Técnico de Áudio [300%]; Técnico de Iluminação [500%]; Técnico de Filmagem [500%] |
| 35 | Limpeza | resources none → Conservadora [0.1%] |
| 38 | Decupagem de Material | resources none → Editor |
| 39 | Edição | resources none → Editor [50%] |
| 40 | Efeitos Especiais | resources none → Animador (Efeitos Especiais) |
| 41 | Tratamento e Correções | resources none → Animador (Efeitos Especiais) [50%] |

## Version 4 (saved 2023-02-05, file Projeto V¡deo Institucional V3.5 (Recursos Superalocados - Parte 2).mpp)

Note of the change: features

Last finish stays 2016-04-04.

Changed:

| ID | Task | Start | Finish | Duration | Total float | Predecessors | Other |
| --- | --- | --- | --- | --- | --- | --- | --- |
| 9 | Selecionar Garoto Propaganda | 2016-02-02 → 2016-02-04 (+2d) | 2016-02-03 → 2016-02-04 (+1d) |  | 17d → 15.5d | 8FF → 8FS+4h |  |
| 12 | Definir Equipe de Filmagem | 2016-02-22 → 2016-02-23 (+1d) | 2016-02-22 → 2016-02-23 (+1d) |  | 0d → -1d | 11SS → 11 |  |
| 17 | Planejar Estrutura de Produção |  |  |  |  | 11, 12, 13, 14, 15, 16 → 11, 12FS-1d, 13, 14, 15, 16 |  |
| 23 | Criar Orçamento e Planejamento Financeiro |  | 2016-02-29 → 2016-03-01 (+1d) | 1d → 2d | 1d → 0d |  | resources Produtor → Produtor [50%]; Diretor [50%] |

## Version 5 (data date 2016-01-08, saved 2023-02-07, file Projeto V¡deo Institucional V4.0 (Pronto Para Linha de Base).mpp)

Note of the change: feautes

Last finish stays 2016-04-04. Complete tasks 0 → 2.

Changed:

| ID | Task | Start | Finish | Complete | Total float | Other |
| --- | --- | --- | --- | --- | --- | --- |
| 1 | Início do Projeto | 2016-01-04 A | 2016-01-04 A | 0% → 100% | 0d → none | baseline start none → 2016-01-04; baseline finish none → 2016-01-04 |
| 2 | **Etapa 1 - Criação** | 2016-01-04 A |  | 0% → 36% |  | baseline start none → 2016-01-04; baseline finish none → 2016-01-22 |
| 3 | Brainstorm de criação | 2016-01-04 A | 2016-01-04 A | 0% → 100% | 0d → none | baseline start none → 2016-01-04; baseline finish none → 2016-01-04 |
| 4 | Criar Roteiro | 2016-01-05 A |  | 0% → 40% |  | baseline start none → 2016-01-05; baseline finish none → 2016-01-20 |
| 5 | Criar Storyboard |  |  |  |  | baseline start none → 2016-01-21; baseline finish none → 2016-01-22 |
| 6 | Término Etapa 1 |  |  |  |  | baseline start none → 2016-01-22; baseline finish none → 2016-01-22 |
| 7 | **Etapa 2 - Planejamento** |  |  |  |  | baseline start none → 2016-01-25; baseline finish none → 2016-03-01 |
| 8 | Selecionar Casting |  |  |  |  | baseline start none → 2016-01-25; baseline finish none → 2016-02-03 |
| 9 | Selecionar Garoto Propaganda |  |  |  |  | baseline start none → 2016-02-04; baseline finish none → 2016-02-04 |
| 10 | Selecionar Locações de Filmagem |  |  |  |  | baseline start none → 2016-01-25; baseline finish none → 2016-02-19 |
| 11 | Definir Equipamentos de Filmagem |  |  |  |  | baseline start none → 2016-02-22; baseline finish none → 2016-02-22 |
| 12 | Definir Equipe de Filmagem |  |  |  | -1d → 0d | baseline start none → 2016-02-23; baseline finish none → 2016-02-23 |
| 13 | Definir Equipamentos de Audio |  |  |  |  | baseline start none → 2016-02-22; baseline finish none → 2016-02-22 |
| 14 | Definir Equipe de Audio |  |  |  |  | baseline start none → 2016-02-22; baseline finish none → 2016-02-22 |
| 15 | Definir Equipamentos de Iluminação |  |  |  |  | baseline start none → 2016-02-22; baseline finish none → 2016-02-22 |
| 16 | Definir Equipe de Iluminação |  |  |  |  | baseline start none → 2016-02-22; baseline finish none → 2016-02-22 |
| 17 | Planejar Estrutura de Produção |  |  |  |  | baseline start none → 2016-02-23; baseline finish none → 2016-02-26 |
| 18 | Planejar Cenários |  |  |  |  | baseline start none → 2016-02-29; baseline finish none → 2016-03-01 |
| 19 | Planejar Figurino |  |  |  |  | baseline start none → 2016-02-29; baseline finish none → 2016-02-29 |
| 20 | Planejar Deslocamento das Equipes |  |  |  |  | baseline start none → 2016-02-22; baseline finish none → 2016-02-22 |
| 21 | Definir Cronograma de Filmagens |  |  |  |  | baseline start none → 2016-02-29; baseline finish none → 2016-03-01 |
| 22 | Definir Cronograma de Edição |  |  |  |  | baseline start none → 2016-02-29; baseline finish none → 2016-03-01 |
| 23 | Criar Orçamento e Planejamento Financeiro |  |  |  |  | resources Produtor [50%]; Diretor [50%] → Produtor; Diretor [50%]; baseline start none → 2016-02-29; baseline finish none → 2016-03-01 |
| 24 | Término Etapa 2 |  |  |  |  | baseline start none → 2016-03-01; baseline finish none → 2016-03-01 |
| 25 | **Etapa 3 - Execução** |  |  |  |  | baseline start none → 2016-03-02; baseline finish none → 2016-03-14 |
| 26 | Contratações dos Serviços e Equipes |  |  |  |  | baseline start none → 2016-03-02; baseline finish none → 2016-03-03 |
| 27 | Montagem do Local |  |  |  |  | baseline start none → 2016-03-04; baseline finish none → 2016-03-04 |
| 28 | Montagem do Cenário |  |  |  |  | baseline start none → 2016-03-07; baseline finish none → 2016-03-07 |
| 29 | Montagem dos Equipamentos de Filmagem |  |  |  |  | baseline start none → 2016-03-08; baseline finish none → 2016-03-08 |
| 30 | Montagem dos Equipamentos de Audio |  |  |  |  | baseline start none → 2016-03-08; baseline finish none → 2016-03-08 |
| 31 | Montagem dos Equipamentos de Iluminação |  |  |  |  | baseline start none → 2016-03-08; baseline finish none → 2016-03-08 |
| 32 | Ensaios |  |  |  |  | baseline start none → 2016-03-09; baseline finish none → 2016-03-09 |
| 33 | Filmagens |  |  |  |  | baseline start none → 2016-03-10; baseline finish none → 2016-03-10 |
| 34 | Desmontagem |  |  |  |  | baseline start none → 2016-03-11; baseline finish none → 2016-03-11 |
| 35 | Limpeza |  |  |  |  | baseline start none → 2016-03-14; baseline finish none → 2016-03-14 |
| 36 | Término Etapa 3 |  |  |  |  | baseline start none → 2016-03-14; baseline finish none → 2016-03-14 |
| 37 | **Etapa 4 - Pós Produção** |  |  |  |  | baseline start none → 2016-03-15; baseline finish none → 2016-04-04 |
| 38 | Decupagem de Material |  |  |  |  | baseline start none → 2016-03-15; baseline finish none → 2016-03-15 |
| 39 | Edição |  |  |  |  | baseline start none → 2016-03-16; baseline finish none → 2016-03-22 |
| 40 | Efeitos Especiais |  |  |  |  | baseline start none → 2016-03-23; baseline finish none → 2016-03-30 |
| 41 | Tratamento e Correções |  |  |  |  | baseline start none → 2016-03-31; baseline finish none → 2016-04-01 |
| 42 | Renderização |  |  |  |  | baseline start none → 2016-04-04; baseline finish none → 2016-04-04 |
| 43 | Entrega |  |  |  |  | baseline start none → 2016-04-04; baseline finish none → 2016-04-04 |
| 44 | Término do Projeto |  |  |  |  | baseline start none → 2016-04-04; baseline finish none → 2016-04-04 |
